# Knowledge sharing platform development

Schedule from MS Project, 2023-01-30 to 2023-09-18.

## Calendars

- Standard: Mon-Fri 08:00-12:00, 13:00-17:00; Sat-Sun off.

## Resources

| Resource |
| --- |
| Management |
| Project Manager |
| Analyst |
| Developer |
| Testers |
| Trainers |
| Technical Communicators |
| Deployment Team |
| Lead Engineer |
| Software Engineer |
| Frontend Web Developer |
| Business analyst |
| UX Designer |

## Schedule

| ID | WBS | Task | Type | Duration | Start | Finish | Predecessors | Total slack | Free slack | Constraint | Resources | Work |
| --- | --- | --- | --- | --- | --- | --- | --- | --- | --- | --- | --- | --- |
| 1 | 1 | **Analysis/Software Requirements** |  | 71d | 2023-01-30 | 2023-05-08 |  |  |  |  |  | 112h |
| 2 | 1.1 | Conduct needs analysis |  | 2d | 2023-01-30 | 2023-01-31 |  | 60d | 0d | start no earlier than 2023-01-30 | Business analyst | 16h |
| 3 | 1.2 | Gather preliminary requirements |  | 3d | 2023-02-01 | 2023-02-03 | 2 | 60d | 0d |  | Business analyst | 24h |
| 4 | 1.3 | JAD session |  | 3d | 2023-02-06 | 2023-02-08 | 3 | 60d | 0d |  | Business analyst; Lead Engineer | 48h |
| 5 | 1.4 | Obtain approvals to proceed (concept, timeline, budget) |  | 2d | 2023-02-09 | 2023-02-10 | 4 | 60d | 0d |  | Management | 16h |
| 6 | 1.5 | Secure required resources |  | 1d | 2023-02-13 | 2023-02-13 | 5 | 60d |  |  | Management | 8h |
| 7 | 1.6 | Analysis complete | milestone | 0d | 2023-01-30 | 2023-01-30 |  | 71d |  |  |  |  |
| 8 | 2 | **Foundation scope 1** |  | 12d | 2023-05-08 | 2023-05-24 | 1 | 0d |  |  |  | 144h |
| 9 | 2.1 | Review scope 1 preliminary requirements |  | 2d | 2023-05-09 | 2023-05-10 | 7 | 0d |  |  | Business analyst | 16h |
| 10 | 2.2 | Detail functional requirements into specifications |  | 2.5d | 2023-05-11 | 2023-05-15 | 9 | 0d |  |  | Business analyst | 20h |
| 11 | 2.3 | Review functional specifications |  | 1d | 2023-05-15 | 2023-05-16 | 10 | 0d |  |  | Business analyst; Lead Engineer | 16h |
| 12 | 2.4 | Convert functioncal specifications into user stories |  | 1d | 2023-05-16 | 2023-05-17 | 11 | 0d |  |  | Lead Engineer | 8h |
| 13 | 2.5 | Insert users stories into devops backlog |  | 4h | 2023-05-17 | 2023-05-17 | 12 | 0d |  |  | Lead Engineer | 4h |
| 14 | 2.6 | **Development design** |  | 5d | 2023-05-18 | 2023-05-24 |  | 0d |  |  |  | 80h |
| 15 | 2.6.1 | Design and create database model |  | 5d | 2023-05-18 | 2023-05-24 | 13 | 0d |  |  | Lead Engineer | 40h |
| 16 | 2.6.2 | Design and create business models |  | 5d | 2023-05-18 | 2023-05-24 | 13 | 0d |  |  | Software Engineer | 40h |
| 17 | 2.7 | Design complete | milestone | 0d | 2023-05-08 | 2023-05-08 |  | 12d |  |  |  |  |
| 18 | 3 | **DevOps & Environment Development Setup** |  | 9d | 2023-05-24 | 2023-06-06 | 8 | 0d |  |  |  | 160h |
| 19 | 3.1 | Create code repository |  | 1d | 2023-05-25 | 2023-05-25 | 17 | 0d |  |  | Frontend Web Developer; Software Engineer | 16h |
| 20 | 3.2 | Setup Neo4j Graph database |  | 3d | 2023-05-26 | 2023-05-30 | 19 | 0d |  |  | Software Engineer | 24h |
| 21 | 3.3 | DEV environment |  | 2d | 2023-05-26 | 2023-05-29 | 19 | 4d | 0d |  | Lead Engineer | 16h |
| 22 | 3.4 | Production environment |  | 2d | 2023-05-30 | 2023-05-31 | 21 | 4d |  |  | Lead Engineer | 16h |
| 23 | 3.5 | Setup CI/CD pipelines |  | 4d | 2023-05-31 | 2023-06-05 | 20 | 0d |  |  | Frontend Web Developer; Software Engineer | 64h |
| 24 | 3.6 | Installed required developer software (IDEs) |  | 1d | 2023-06-06 | 2023-06-06 | 23 | 0d |  |  | Frontend Web Developer; Software Engineer; UX Designer | 24h |
| 25 | 3.7 | Development setup complete | milestone | 0d | 2023-05-24 | 2023-05-24 |  | 9d |  |  |  |  |

| ID | WBS | Task | Type | Duration | Start | Finish | Predecessors | Total slack | Resources | Work |
| --- | --- | --- | --- | --- | --- | --- | --- | --- | --- | --- |
| 26 | 4 | **Development scope 1** |  | 44d | 2023-06-07 | 2023-08-07 | 18 | 0d |  | 792h |
| 27 | 4.1 | **Timebox 1** |  | 13.5d | 2023-06-07 | 2023-06-26 | 25 | 0d |  | 292h |
| 28 | 4.1.1 | **Timebox 1 review** |  | 1d | 2023-06-07 | 2023-06-07 |  | 0d |  | 40h |
| 29 | 4.1.1.1 | Timebox 1 refinement |  | 1d | 2023-06-07 | 2023-06-07 | 25 | 0d | Business analyst; Frontend Web Developer; Lead Engineer; Software Engineer; UX Designer | 40h |
| 30 | 4.1.2 | **Timebox 1 development** |  | 10d | 2023-06-08 | 2023-06-21 | 28 | 0d |  | 144h |
| 31 | 4.1.2.1 | Create asp.net core web api project (C#) |  | 5d | 2023-06-08 | 2023-06-14 | 29 | 5d | Software Engineer | 40h |
| 32 | 4.1.2.2 | Create Graph Models from models |  | 5d | 2023-06-08 | 2023-06-14 | 29 | 0d | Lead Engineer | 40h |
| 33 | 4.1.2.3 | Create landing page |  | 3d | 2023-06-08 | 2023-06-12 | 28 | 7d | Frontend Web Developer | 24h |
| 34 | 4.1.2.4 | Add OAuth Middleware and SSO Login |  | 4.5d | 2023-06-15 | 2023-06-21 | 32 | 0d | Lead Engineer | 36h |
| 35 | 4.1.2.5 | DEV Deployment |  | 0.5d | 2023-06-21 | 2023-06-21 | 31, 32, 34 | 0d | Lead Engineer | 4h |
| 36 | 4.1.3 | **Timebox 1 UX design** |  | 7d | 2023-06-08 | 2023-06-16 | 28 | 5.5d |  | 56h |
| 37 | 4.1.3.1 | Design UX content creation pages |  | 7d | 2023-06-08 | 2023-06-16 | 25 | 1d | UX Designer | 56h |
| 38 | 4.1.4 | **Timebox 1 testing** |  | 1d | 2023-06-22 | 2023-06-22 | 30 | 0d |  | 8h |
| 39 | 4.1.4.1 | Peer test ASP.NET Core Web API |  | 1d | 2023-06-22 | 2023-06-22 | 31 | 0d | Lead Engineer | 8h |
| 40 | 4.1.5 | Production Deployment |  | 0.5d | 2023-06-23 | 2023-06-23 | 38 | 0d | Lead Engineer | 4h |
| 41 | 4.1.6 | Timebox retrospection |  | 1d | 2023-06-23 | 2023-06-26 | 40 | 0d | Business analyst; Frontend Web Developer; Lead Engineer; Software Engineer; UX Designer | 40h |
| 42 | 4.1.7 | Timebox 2 complete | milestone | 0d | 2023-06-26 | 2023-06-26 | 41 | 0d |  |  |
| 43 | 4.2 | **Timebox 2** |  | 15d | 2023-06-26 | 2023-07-17 | 27 | 0d |  | 280h |
| 44 | 4.2.1 | **Timebox 2 review** |  | 1d | 2023-06-26 | 2023-06-27 | 42 | 0d |  | 40h |
| 45 | 4.2.1.1 | Timebox 2 refinement |  | 1d | 2023-06-26 | 2023-06-27 | 42 | 0d | Business analyst; Frontend Web Developer; Lead Engineer; Software Engineer; UX Designer | 40h |
| 46 | 4.2.2 | **Timebox 2 development** |  | 10.5d | 2023-06-27 | 2023-07-11 | 44 | 0d |  | 124h |
| 47 | 4.2.2.1 | Create content feed page |  | 5d | 2023-06-27 | 2023-07-04 | 45 | 5d | Lead Engineer | 40h |
| 48 | 4.2.2.2 | Create content and tag services |  | 5d | 2023-06-27 | 2023-07-04 | 45 | 0d | Software Engineer | 40h |
| 49 | 4.2.2.3 | Create post and tag page |  | 5d | 2023-07-04 | 2023-07-11 | 45, 48 | 0d | Frontend Web Developer | 40h |
| 50 | 4.2.2.4 | UAT Deployment |  | 0.5d | 2023-07-11 | 2023-07-11 | 47, 49 | 0d | Lead Engineer | 4h |

| ID | WBS | Task | Type | Duration | Start | Finish | Predecessors | Total slack | Resources | Work |
| --- | --- | --- | --- | --- | --- | --- | --- | --- | --- | --- |
| 51 | 4.2.3 | **Timebox 2 UX design** |  | 7d | 2023-06-27 | 2023-07-06 | 44 | 7d |  | 56h |
| 52 | 4.2.3.1 | Design content feed pages |  | 7d | 2023-06-27 | 2023-07-06 | 45 | 2d | UX Designer | 56h |
| 53 | 4.2.4 | **Timebox 2 testing** |  | 2d | 2023-07-12 | 2023-07-13 | 46 | 0d |  | 16h |
| 54 | 4.2.4.1 | Test content create, update and delete |  | 1d | 2023-07-12 | 2023-07-12 | 48 | 0d | Business analyst | 8h |
| 55 | 4.2.4.2 | Test SSO Login |  | 1d | 2023-07-13 | 2023-07-13 | 54 | 0d | Business analyst | 8h |
| 56 | 4.2.5 | Timebox retrospection |  | 1d | 2023-07-14 | 2023-07-14 | 53 | 0d | Business analyst; Frontend Web Developer; Lead Engineer; Software Engineer; UX Designer | 40h |
| 57 | 4.2.6 | Production deployment |  | 0.5d | 2023-07-17 | 2023-07-17 | 56 | 0d | Lead Engineer | 4h |
| 58 | 4.2.7 | Timebox 2 completion | milestone | 0d | 2023-07-17 | 2023-07-17 | 57 | 0d |  |  |
| 59 | 4.3 | **Timebox 3** |  | 15.5d | 2023-07-17 | 2023-08-07 | 43 | 0d |  | 220h |
| 60 | 4.3.1 | **Timebox 3 review** |  | 1d | 2023-07-17 | 2023-07-18 | 57 | 0d |  | 40h |
| 61 | 4.3.1.1 | Timebox 3 refinement |  | 1d | 2023-07-17 | 2023-07-18 | 58 | 0d | Business analyst; Frontend Web Developer; Lead Engineer; Software Engineer; UX Designer | 40h |
| 62 | 4.3.2 | **Timebox 3 development** |  | 10.5d | 2023-07-18 | 2023-08-01 | 60 | 0d |  | 116h |
| 63 | 4.3.2.1 | Create profile and admin services |  | 5d | 2023-07-18 | 2023-07-25 | 61 | 0d | Lead Engineer | 40h |
| 64 | 4.3.2.2 | Create profile service |  | 5d | 2023-07-25 | 2023-08-01 | 63 | 0d | Software Engineer | 40h |
| 65 | 4.3.2.3 | Create admin page |  | 4d | 2023-07-25 | 2023-07-31 | 63 | 1d | Frontend Web Developer | 32h |
| 66 | 4.3.2.4 | DEV Deployment |  | 0.5d | 2023-08-01 | 2023-08-01 | 65, 63, 64 | 0d | Lead Engineer | 4h |
| 67 | 4.3.3 | **Timebox 3 testing** |  | 2d | 2023-08-02 | 2023-08-03 | 62 | 0d |  | 16h |
| 68 | 4.3.3.1 | Test search and commenting |  | 1d | 2023-08-02 | 2023-08-02 | 63 | 0d | Business analyst | 8h |
| 69 | 4.3.3.2 | Test tagging on content feed |  | 1d | 2023-08-03 | 2023-08-03 | 68 | 0d | Business analyst | 8h |
| 70 | 4.3.4 | Timebox retrospection |  | 1d | 2023-08-04 | 2023-08-04 | 67 | 0d | Business analyst; Frontend Web Developer; Lead Engineer; Software Engineer; UX Designer | 40h |
| 71 | 4.3.5 | Production deployment |  | 1d | 2023-08-07 | 2023-08-07 | 70 | 0d | Lead Engineer | 8h |
| 72 | 4.4 | Development complete | milestone | 0d | 2023-08-07 | 2023-08-07 | 59 | 0d |  |  |
| 73 | 5 | Project contingency |  | 30d | 2023-08-08 | 2023-09-18 | 72 | 0d |  |  |
| 74 | 6 | Software development template complete | milestone | 0d | 2023-08-07 | 2023-08-07 | 72 | 30d |  |  |
